# iPad10.9Development

Schedule from MS Project, 2023-07-07 to 2023-07-24.

## Calendars

- Standard: Mon-Fri 08:00-12:00, 13:00-17:00; Sat-Sun off.

## Schedule

| ID | WBS | Task | Type | Duration | Start | Finish | Predecessors | Total slack | Free slack |
| --- | --- | --- | --- | --- | --- | --- | --- | --- | --- |
| 1 | 1 | **Design iPad 10.9 by Eric Hanoun and Kyle Galway** |  | 12d? | 2023-07-07 | 2023-07-24 |  | 0d |  |
| 2 | 1.1 | **Initiation Phase** |  | 0d? | 2023-07-07 | 2023-07-07 |  | 0d |  |
| 3 | 1.1.1 | Identify Stakeholders | milestone | 0d? | 2023-07-07 | 2023-07-07 |  | 0d |  |
| 4 | 1.1.2 | Develop Project charter | milestone | 0d? | 2023-07-07 | 2023-07-07 | 3 | 0d |  |
| 5 | 1.1.3 | Hold Kick-off Meeting | milestone | 0d? | 2023-07-07 | 2023-07-07 | 4 | 0d |  |
| 6 | 1.1.4 | Initiation Phase Complete Milestone | milestone | 0d | 2023-07-07 | 2023-07-07 | 5 | 0d |  |
| 7 | 1.2 | **Planning Phase** |  | 3d? | 2023-07-07 | 2023-07-11 | 2 | 0d |  |
| 8 | 1.2.1 | Develop Project Management Plan | milestone | 0d? | 2023-07-07 | 2023-07-07 | 4 | 3d |  |
| 9 | 1.2.2 | **Complete Scope Management Planning** |  | 1d? | 2023-07-07 | 2023-07-07 |  | 0d |  |
| 10 | 1.2.2.1 | Plan Scope Management |  | 1d? | 2023-07-07 | 2023-07-07 |  | -3d | 0d |
| 11 | 1.2.2.2 | Collect Requirements | milestone | 0d? | 2023-07-07 | 2023-07-07 | 10 | -1d | 0d |
| 12 | 1.2.2.3 | Define Project Scope | milestone | 0d? | 2023-07-07 | 2023-07-07 | 11 | -1d | 0d |
| 13 | 1.2.2.4 | Create Work Breakdown Structure | milestone | 0d? | 2023-07-07 | 2023-07-07 | 12 | -1d | 0d |
| 14 | 1.2.3 | **Complete Schedule Management Planning** |  | 0d? | 2023-07-07 | 2023-07-07 | 9 | 0d |  |
| 15 | 1.2.3.1 | Plan Schedule Management | milestone | 0d? | 2023-07-07 | 2023-07-07 |  | -3d | 0d |
| 16 | 1.2.3.2 | Define Activites | milestone | 0d? | 2023-07-07 | 2023-07-07 | 15 | -3d | 0d |
| 17 | 1.2.3.3 | Sequence Activities | milestone | 0d? | 2023-07-07 | 2023-07-07 | 16 | -1d | 0d |
| 18 | 1.2.3.4 | Estimate Activity Durations | milestone | 0d? | 2023-07-07 | 2023-07-07 | 17 | -1d | 0d |
| 19 | 1.2.3.5 | Develop Schedule | milestone | 0d? | 2023-07-07 | 2023-07-07 | 18 | -1d | 0d |
| 20 | 1.2.4 | **Complete Cost Management Planning** |  | 1d? | 2023-07-10 | 2023-07-10 | 14 | 0d |  |
| 21 | 1.2.4.1 | Plan Cost Management |  | 1d? | 2023-07-10 | 2023-07-10 |  | -3d | 0d |
| 22 | 1.2.4.2 | Estimate Costs | milestone | 0d? | 2023-07-10 | 2023-07-10 | 21 | -2d | 0d |
| 23 | 1.2.4.3 | Determine Project Budget | milestone | 0d? | 2023-07-10 | 2023-07-10 | 22 | -2d | 0d |
| 24 | 1.2.5 | Plan Stakeholder Engagement |  | 1d? | 2023-07-11 | 2023-07-11 | 20, 3 | -3d | 0d |
| 25 | 1.2.6 | Plan Quality Management | milestone | 0d? | 2023-07-11 | 2023-07-11 | 24 | -3d | 0d |

| ID | WBS | Task | Type | Duration | Start | Finish | Predecessors | Total slack | Free slack |
| --- | --- | --- | --- | --- | --- | --- | --- | --- | --- |
| 26 | 1.2.7 | **Complete Risk Management Planning** |  | 0d? | 2023-07-11 | 2023-07-11 | 25 | 0d |  |
| 27 | 1.2.7.1 | Plan Risk Management | milestone | 0d? | 2023-07-11 | 2023-07-11 |  | -3d | 0d |
| 28 | 1.2.7.2 | Identify Risks | milestone | 0d? | 2023-07-11 | 2023-07-11 | 27 | -3d | 0d |
| 29 | 1.2.7.3 | Perform Qualitative Risk Analysis | milestone | 0d? | 2023-07-11 | 2023-07-11 | 28 | -3d | 0d |
| 30 | 1.2.7.4 | Perform Quantitative Risk Analysis | milestone | 0d? | 2023-07-11 | 2023-07-11 | 29 | -3d | 0d |
| 31 | 1.2.7.5 | Plan Risk Responses | milestone | 0d? | 2023-07-11 | 2023-07-11 | 30 | -3d | 0d |
| 32 | 1.2.8 | Planning Phase Complete Milestone | milestone | 0d? | 2023-07-11 | 2023-07-11 | 8, 9, 14, 20, 25, 26 | -3d | 0d |
| 33 | 1.3 | **Executing Phase** |  | 9d? | 2023-07-11 | 2023-07-24 | 7 | 0d |  |
| 34 | 1.3.1 | **Project Integration Management** |  | 0d? | 2023-07-11 | 2023-07-11 |  | 9d |  |
| 35 | 1.3.1.1 | Direct and Manage Project Work | milestone | 0d? | 2023-07-11 | 2023-07-11 | 8 | 1d | 0d |
| 36 | 1.3.1.2 | Manage Project Knowledge | milestone | 0d? | 2023-07-11 | 2023-07-11 | 35SS | 1d | 0d |
| 37 | 1.3.2 | **Create Proposal** |  | 0d? | 2023-07-11 | 2023-07-11 |  | 0d |  |
| 38 | 1.3.2.1 | Conduct Market Research | milestone | 0d? | 2023-07-11 | 2023-07-11 |  | 0d |  |
| 39 | 1.3.2.2 | Consult with Company Stakeholders | milestone | 0d? | 2023-07-11 | 2023-07-11 |  | 0d |  |
| 40 | 1.3.2.3 | Develop Project Proposal | milestone | 0d? | 2023-07-11 | 2023-07-11 | 39SF, 38SF | 0d |  |
| 41 | 1.3.2.4 | Approval Finalized Milestone | milestone | 0d? | 2023-07-11 | 2023-07-11 | 40 | 0d |  |
| 42 | 1.3.3 | **Obtain Approval** |  | 0d? | 2023-07-11 | 2023-07-11 | 37 | 0d |  |
| 43 | 1.3.3.1 | Discuss with Company Stakeholders | milestone | 0d? | 2023-07-11 | 2023-07-11 |  | 0d |  |
| 44 | 1.3.3.2 | Review by Lead Designer | milestone | 0d? | 2023-07-11 | 2023-07-11 | 43 | 0d |  |
| 45 | 1.3.3.3 | Review by Hardware Designer | milestone | 0d? | 2023-07-11 | 2023-07-11 | 43 | 0d |  |
| 46 | 1.3.3.4 | Review by Software Designer | milestone | 0d? | 2023-07-11 | 2023-07-11 | 43 | 0d |  |
| 47 | 1.3.3.5 | Project Approval Obtained Milestone | milestone | 0d? | 2023-07-11 | 2023-07-11 | 44, 45, 46 | 0d |  |
| 48 | 1.3.4 | **Design the Tablet** |  | 5d? | 2023-07-11 | 2023-07-18 | 42 | 0d |  |
| 49 | 1.3.4.1 | **Hardware Design** |  | 0d? | 2023-07-11 | 2023-07-11 |  | 0d |  |
| 50 | 1.3.4.1.1 | **Design Liquid Retina Display** |  | 0d? | 2023-07-11 | 2023-07-11 |  | 0d |  |
| 51 | 1.3.4.1.1.1 | Create Screen Prototype | milestone | 0d? | 2023-07-11 | 2023-07-11 |  | 0d |  |
| 52 | 1.3.4.1.1.2 | Test Screen Prototype | milestone | 0d? | 2023-07-11 | 2023-07-11 | 51 | 0d |  |

Notes:
- 40: Develop the Project Proposal has both a Start-to-Finish relationship with its predecessors, Conduct Market Research and Consult with Company Stakeholders. The Project Proposal cannot finish before the Stakeholders have been consulted and some amount of research has been done.

| ID | WBS | Task | Type | Duration | Start | Finish | Predecessors | Total slack | Free slack |
| --- | --- | --- | --- | --- | --- | --- | --- | --- | --- |
| 53 | 1.3.4.1.2 | **Design 12MP Ultra Wide Camera** |  | 0d? | 2023-07-11 | 2023-07-11 | 50 | 0d |  |
| 54 | 1.3.4.1.2.1 | Create Camera Prototype | milestone, manual | 0d? | 2023-07-11 | 2023-07-11 |  |  |  |
| 55 | 1.3.4.1.2.2 | Test Camera Prototype | milestone, manual | 0d? | 2023-07-11 | 2023-07-11 |  |  |  |
| 56 | 1.3.4.1.3 | **Design Wifi 6 Adapter** |  | 0d? | 2023-07-11 | 2023-07-11 | 53 | 5d | 0d |
| 57 | 1.3.4.1.3.1 | Create Wi-fi 6 Adapter Prototype | milestone | 0d? | 2023-07-11 | 2023-07-11 |  | 5d | 0d |
| 58 | 1.3.4.1.3.2 | Test Wi-fi 6 Adapter Prototype | milestone | 0d? | 2023-07-11 | 2023-07-11 | 57 | 5d |  |
| 59 | 1.3.4.1.4 | **Design Touch ID Scanner** |  | 0d? | 2023-07-11 | 2023-07-11 | 56 | 5d | 0d |
| 60 | 1.3.4.1.4.1 | Create Touch ID Scanner Prototype | milestone | 0d? | 2023-07-11 | 2023-07-11 |  | 5d | 0d |
| 61 | 1.3.4.1.4.2 | Test Touch ID Scanner Prototype | milestone | 0d? | 2023-07-11 | 2023-07-11 | 60 | 5d |  |
| 62 | 1.3.4.1.5 | **Design Apple Pencil** |  | 0d? | 2023-07-11 | 2023-07-11 | 59 | 5d | 0d |
| 63 | 1.3.4.1.5.1 | Create Apple Pencil Prototype | milestone | 0d? | 2023-07-11 | 2023-07-11 |  | 5d | 0d |
| 64 | 1.3.4.1.5.2 | Test Apple Pencil Prototype | milestone | 0d? | 2023-07-11 | 2023-07-11 | 63 | 5d |  |
| 65 | 1.3.4.1.6 | **Design Magic Keyboard Folio** |  | 0d? | 2023-07-11 | 2023-07-11 | 62 | 5d | 0d |
| 66 | 1.3.4.1.6.1 | Create Magic Keyboard Folio and Trackpad Prototype | milestone | 0d? | 2023-07-11 | 2023-07-11 |  | 5d | 0d |
| 67 | 1.3.4.1.6.2 | Test Magic Keyboard Folio and Trackpad Prototype | milestone | 0d? | 2023-07-11 | 2023-07-11 | 66 | 5d |  |
| 68 | 1.3.4.1.7 | **Performance Benchmarking Design** |  | 0d? | 2023-07-11 | 2023-07-11 | 65 | 5d | 0d |
| 69 | 1.3.4.1.7.1 | Develop A14 Bionic Chip Processor Prototype | milestone | 0d? | 2023-07-11 | 2023-07-11 |  | 5d | 0d |
| 70 | 1.3.4.1.7.2 | Benchmark Processor Prototype | milestone | 0d? | 2023-07-11 | 2023-07-11 | 69 | 5d |  |
| 71 | 1.3.4.1.8 | Hardware Design Complete Milestone | milestone | 0d? | 2023-07-11 | 2023-07-11 | 68 | 5d |  |
| 72 | 1.3.4.2 | **Software Design** |  | 5d? | 2023-07-11 | 2023-07-18 |  | 0d |  |
| 73 | 1.3.4.2.1 | **Develop iPadOS** |  | 0d? | 2023-07-11 | 2023-07-11 |  | 0d |  |
| 74 | 1.3.4.2.1.1 | Design UI/UX for Operating System GUI | milestone | 0d? | 2023-07-11 | 2023-07-11 |  | 0d |  |
| 75 | 1.3.4.2.1.2 | Program OS | milestone | 0d? | 2023-07-11 | 2023-07-11 | 74 | 0d |  |
| 76 | 1.3.4.2.1.3 | Benchmark OS Performance | milestone | 0d? | 2023-07-11 | 2023-07-11 | 75 | 0d |  |

| ID | WBS | Task | Type | Duration | Start | Finish | Predecessors | Total slack |
| --- | --- | --- | --- | --- | --- | --- | --- | --- |
| 77 | 1.3.4.2.2 | **Design Canvas APP** |  | 0d? | 2023-07-11 | 2023-07-11 | 73 | 0d |
| 78 | 1.3.4.2.2.1 | Design UI/UX for Canvas | milestone | 0d? | 2023-07-11 | 2023-07-11 |  | 0d |
| 79 | 1.3.4.2.2.2 | Program Canvas App | milestone | 0d? | 2023-07-11 | 2023-07-11 | 78 | 0d |
| 80 | 1.3.4.2.2.3 | Test Canvas App | milestone | 0d? | 2023-07-11 | 2023-07-11 | 79 | 0d |
| 81 | 1.3.4.2.3 | **Design Augmented Reality Integration Software** |  | 3d? | 2023-07-12 | 2023-07-14 | 77, 53 | 0d |
| 82 | 1.3.4.2.3.1 | Design AR Integration Software Architecture |  | 1d? | 2023-07-12 | 2023-07-12 |  | 0d |
| 83 | 1.3.4.2.3.2 | Program AR Integration Software |  | 1d? | 2023-07-13 | 2023-07-13 | 82 | 0d |
| 84 | 1.3.4.2.3.3 | Test AR Integration Software |  | 1d? | 2023-07-14 | 2023-07-14 | 83 | 0d |
| 85 | 1.3.4.2.4 | **Design App Store Support** |  | 2d? | 2023-07-17 | 2023-07-18 | 81 | 0d |
| 86 | 1.3.4.2.4.1 | Design App Store Container Architecture |  | 1d? | 2023-07-17 | 2023-07-17 |  | 0d |
| 87 | 1.3.4.2.4.2 | Program App Store Container Application |  | 1d? | 2023-07-18 | 2023-07-18 | 86 | 0d |
| 88 | 1.3.4.2.4.3 | Test Compatibility with App Store Web Application | milestone | 0d? | 2023-07-18 | 2023-07-18 | 87 | 0d |
| 89 | 1.3.4.2.5 | Software Design Complete Milestone | milestone | 0d? | 2023-07-11 | 2023-07-11 |  | 5d |
| 90 | 1.3.4.3 | Tablet Design Complete Milestone | milestone | 0d? | 2023-07-18 | 2023-07-18 | 49, 72 | 1d |
| 91 | 1.3.5 | **Produce Tablet Prototypes** |  | 1d? | 2023-07-18 | 2023-07-19 | 49, 72 | 0d |
| 92 | 1.3.5.1 | **Manufacture Prototype Tablets** |  | 1d? | 2023-07-18 | 2023-07-19 |  | 0d |
| 93 | 1.3.5.1.1 | Meet with Manufacturing Team Lead | milestone | 0d? | 2023-07-18 | 2023-07-18 |  | 0d |
| 94 | 1.3.5.1.2 | Manufacture Liquid Retina Display | milestone | 0d? | 2023-07-18 | 2023-07-18 | 93 | 1d |
| 95 | 1.3.5.1.3 | Manufacture Magic Keyboard Folio and Trackpad | milestone | 0d? | 2023-07-18 | 2023-07-18 | 93 | 1d |
| 96 | 1.3.5.1.4 | Manufacture Wi-fi 6 Adapter | milestone | 0d? | 2023-07-18 | 2023-07-18 | 93 | 1d |
| 97 | 1.3.5.1.5 | Manufacture Touch ID Scanner | milestone | 0d? | 2023-07-18 | 2023-07-18 | 93 | 1d |
| 98 | 1.3.5.1.6 | Manufacture Apple Pencil | milestone | 0d? | 2023-07-18 | 2023-07-18 | 93 | 1d |
| 99 | 1.3.5.1.7 | Manufacture 12MP Ultra Wide Camera |  | 1d? | 2023-07-19 | 2023-07-19 | 93 | 0d |
| 100 | 1.3.5.1.8 | Parts Manufacturing Complete Milestone | milestone | 0d? | 2023-07-19 | 2023-07-19 | 94, 95, 96, 97, 98, 99 | 0d |
| 101 | 1.3.5.1.9 | Assemble Tablets from Components | milestone | 0d? | 2023-07-19 | 2023-07-19 | 100 | 0d |
| 102 | 1.3.5.1.10 | Manufacturing Complete Milestone | milestone | 0d? | 2023-07-19 | 2023-07-19 | 101 | 0d |

Notes:
- 81: The AR Integration Software is the supporting architecture and API links needed for the tablet to support AR applications through the use of the 12MP Ultra Wide Front Camera. / Because this software is required to integrate with the Camera, it only be started once development on the camera has completed. This is required to ensure that the software developed is capable of supporting the camera which will be integrated into the tablet. If the work proceeds on the AR integration software, but the camera goes through a major rework, much of the software development may be rendered unusable or be required to be majorly refactored.
- 85: The iPad 10.9 willl use same Web Application as the previous iPad models. This means that instead of developing a Native iOS application, much of the development work can be recycled. / Nonetheless, the container for the App Store Web Application must be created in the iPad 10.9's native environment, and it must be tested to ensure that it is compatible with the app store.

| ID | WBS | Task | Type | Duration | Start | Finish | Predecessors | Total slack | Free slack |
| --- | --- | --- | --- | --- | --- | --- | --- | --- | --- |
| 103 | 1.3.6 | **Obtain Prototype Quality Assurance Approval** |  | 3d? | 2023-07-20 | 2023-07-24 | 92 | 0d |  |
| 104 | 1.3.6.1 | Obtain Hardware Performance Verification |  | 1d? | 2023-07-20 | 2023-07-20 |  | 0d |  |
| 105 | 1.3.6.2 | Obtain Software Performance Verification |  | 1d? | 2023-07-20 | 2023-07-20 |  | 0d |  |
| 106 | 1.3.6.3 | Obtain Regulatory Compliance Verification |  | 1d? | 2023-07-21 | 2023-07-21 | 104, 105 | 0d |  |
| 107 | 1.3.6.4 | Obtain Test User Approval |  | 1d? | 2023-07-24 | 2023-07-24 | 106 | 0d |  |
| 108 | 1.3.6.5 | Quality Assurance Verification Obtained Milestone | milestone | 0d | 2023-07-24 | 2023-07-24 | 107 | 0d |  |
| 109 | 1.3.7 | Executing Phase Complete Milestone | milestone | 0d? | 2023-07-24 | 2023-07-24 | 103 | 0d |  |
| 110 | 1.4 | **Monitoring and Controlling Phase** |  | 6d? | 2023-07-11 | 2023-07-19 | 33SS | 3d |  |
| 111 | 1.4.1 | Monitor and Control Project Work | milestone | 0d? | 2023-07-11 | 2023-07-11 | 35FF, 36FF | 9d | 0d |
| 112 | 1.4.2 | Perform integrated Change Control | milestone | 0d? | 2023-07-11 | 2023-07-11 | 111FF | 9d | 0d |
| 113 | 1.4.3 | Validate Scope | milestone | 0d? | 2023-07-11 | 2023-07-11 | 13, 37FF | 9d | 0d |
| 114 | 1.4.4 | Control Scope | milestone | 0d? | 2023-07-11 | 2023-07-11 | 113FF | 9d |  |
| 115 | 1.4.5 | Control Schedule | milestone | 0d? | 2023-07-18 | 2023-07-18 | 19, 48FF | 4d |  |
| 116 | 1.4.6 | Control Costs | milestone | 0d? | 2023-07-19 | 2023-07-19 | 21, 48SS, 92FF | 3d |  |
| 117 | 1.4.7 | Control Quality | milestone | 0d? | 2023-07-18 | 2023-07-18 | 25, 48FF, 42 | 4d |  |
| 118 | 1.4.8 | Monitor Risks | milestone | 0d? | 2023-07-11 | 2023-07-11 | 31, 37FF | 9d |  |
| 119 | 1.4.9 | Monitor Stakeholder Engagement | milestone | 0d? | 2023-07-11 | 2023-07-11 | 24, 42FF | 9d |  |
| 120 | 1.4.10 | Monitoring and Controlling Phase Complete Milestone | milestone | 0d? | 2023-07-11 | 2023-07-11 | 112 | 9d |  |
| 121 | 1.5 | **Closing** |  | 0d? | 2023-07-24 | 2023-07-24 | 33, 110 | 0d |  |
| 122 | 1.5.1 | Close Project or Phase | milestone | 0d? | 2023-07-24 | 2023-07-24 | 112 | 0d |  |
| 123 | 1.5.2 | Project Complete Milestone | milestone | 0d? | 2023-07-24 | 2023-07-24 | 122 | 0d |  |
